# Dynaslope2018

Schedule from MS Project XML, 2018-02-09 to 2018-09-11.

## Calendars

- Standard[Imported][Imported][Imported][Imported]: Mon-Fri 08:00-12:00, 13:00-17:00; Sat-Sun off. Exceptions (off unless hours are given): 2018-02-12, 2018-03-01 to 2018-03-05, 2018-03-25 to 2018-03-26, 2018-03-29 to 2018-04-02, 2018-04-05, 2018-04-27, 2018-05-03 to 2018-05-07, 2018-05-31 to 2018-06-03, 2018-06-08, 2018-06-28 to 2018-07-02, 2018-08-02 to 2018-08-06, 2018-08-17, 2018-08-23, 2018-08-30 to 2018-09-03.

## Resources

| Resource |
| --- |
| Unassigned |
| geotech 1 |
| geotech 2 |
| geotech 3 |
| geol 2 |
| Surveyor 1 |
| geol 8 |
| geol 7 |
| geol 6 |
| geol 1 |
| geol 3 |
| geol 4 |
| geol 5 |
| data scientist 6 |
| data scientist 8 |
| data scientist 1 |
| data scientist 2 |
| data scientist 3 |
| data scientist 4 |
| data scientist 5 |
| data scientist 7 |
| social scientist 3 |
| social scientist 4 |
| social scientist 1 |
| social scientist 2 |
| emb engr 2 |
| DRRS 2 |
| DRRS 1 |
| emb engr 6 |
| comm res 1 |
| comm res 2 |
| sys ad 2 |
| full stack dev 2 |
| eletech |
| full stack dev 5 |
| full stack dev 4 |
| full stack dev 3 |
| full stack dev 2 |
| full stack dev 1 |
| programmer 3 |
| comm dev |
| emb engr 8 |
| emb engr 1 |
| emb engr 3 |
| emb engr 4 |
| emb engr 5 |
| emb engr 7 |
| MEAL officer 2 |
| sys ad 1 |
| MEAL officer 5 |
| programmer 5 |
| programmer 6 |
| programmer 1 |
| programmer 2 |
| programmer 4 |
| MEAL staff 4 |
| analyst 1 |
| analyst 2 |
| analyst 3 |
| analyst 4 |
| MEAL staff 9 |
| MEAL officer 1 |
| MEAL officer 3 |
| MEAL officer 4 |
| MEAL officer 6 |
| comm dev 4 |
| MEAL staff 1 |
| MEAL staff 2 |
| MEAL staff 3 |
| MEAL staff 5 |
| MEAL staff 6 |
| MEAL staff 7 |
| MEAL staff 8 |
| MEAL staff 10 |
| MEAL staff 11 |
| MEAL staff 12 |
| comm dev 1 |
| comm dev 2 |
| comm dev 3 |
| training specialist 3 |
| facilitator 1 |
| facilitator 2 |
| facilitator 3 |
| technical writer 2 |
| monitoringPersonnel40+ |
| eletech 1 |
| eletech 2 |
| eletech 3 |
| eletech 4 |
| eletech 5 |
| training specialist |
| training specialist 1 |
| training specialist 2 |
| training specialist 4 |
| MEAL expert |
| technical writer |
| technical writer 1 |
| technical writer 3 |
| report reviewer |
| report reviewer 1 |
| report reviewer 2 |
| report reviewer 3 |

## Schedule

| ID | WBS | Task | Duration | Start | Finish | Predecessors | Total slack | Constraint | Resources |
| --- | --- | --- | --- | --- | --- | --- | --- | --- | --- |
| 1 | 1 | **Landslide risk information** | 125d? | 2018-02-09 | 2018-09-10 |  |  |  |  |
| 2 | 1.1 | **methods report (Hazards)** | 125d? | 2018-02-09 | 2018-09-10 |  |  |  |  |
| 3 | 1.1.1 | MoMs | 1d? | 2018-09-10 | 2018-09-10 |  | 12400d | as late as possible |  |
| 4 | 1.1.2 | study surficial displacement behaviour | 1d? | 2018-09-10 | 2018-09-10 |  | 12400d | as late as possible |  |
| 5 | 1.1.3 | **slope stability models (FEM)** | 125d | 2018-02-09 | 2018-09-10 |  |  |  |  |
| 6 | 1.1.3.1 | review related literature | 7d | 2018-07-12 | 2018-07-20 |  | 9100d | as late as possible | geotech 1 |
| 7 | 1.1.3.2 | develop prototype | 5d | 2018-07-23 | 2018-07-27 | 6 |  | as late as possible | geotech 1 |
| 8 | 1.1.3.3 | test model with monitoring data | 11d | 2018-07-30 | 2018-08-13 | 7 |  | as late as possible | geotech 1 |
| 9 | 1.1.3.4 | field data gathering | 6d | 2018-08-14 | 2018-08-21 | 7, 8 |  | as late as possible | geol 1 |
| 10 | 1.1.3.5 | field data gathering | 6d | 2018-08-14 | 2018-08-21 | 7, 8 |  | as late as possible | geotech 1 |
| 11 | 1.1.3.6 | evaluate model (report as PI of slope stab model) | 4d | 2018-08-22 | 2018-08-27 | 8, 9, 10 |  | as late as possible | geotech 1 |
| 12 | 1.1.3.7 | write report | 5d | 2018-08-28 | 2018-09-03 | 11 |  | as late as possible | geotech 1 |
| 13 | 1.1.3.8 | develop training materials | 3d | 2018-09-04 | 2018-09-06 | 12 |  | as late as possible | geotech 1 |
| 14 | 1.1.3.9 | conduct training | 2d | 2018-09-07 | 2018-09-10 | 13 |  | as late as possible | geotech 1 |
| 15 | 1.1.4 | **slope stability models (LEM1)** | 125d | 2018-02-09 | 2018-09-10 |  |  |  |  |
| 16 | 1.1.4.1 | review related literature | 5d | 2018-07-16 | 2018-07-20 |  | 9300d | as late as possible | geotech 2 |
| 17 | 1.1.4.2 | develop prototype | 5d | 2018-07-23 | 2018-07-27 | 16 |  | as late as possible | geotech 2 |
| 18 | 1.1.4.3 | test model with monitoring data | 5d | 2018-07-30 | 2018-08-03 | 17, 242 |  | as late as possible | geotech 2 |
| 19 | 1.1.4.4 | field data gathering | 13d | 2018-08-06 | 2018-08-22 | 17, 18 |  | as late as possible | geol 2 |
| 20 | 1.1.4.5 | field data gathering | 13d | 2018-08-06 | 2018-08-22 | 17, 18 |  | as late as possible | geotech 2 |
| 21 | 1.1.4.6 | evaluate model (report as PI of slope stab model) | 3d | 2018-08-23 | 2018-08-27 | 18, 19, 20 |  | as late as possible | geotech 2 |
| 22 | 1.1.4.7 | write report | 5d | 2018-08-28 | 2018-09-03 | 21 |  | as late as possible | geotech 2 |
| 23 | 1.1.4.8 | develop training materials | 3d | 2018-09-04 | 2018-09-06 | 22 |  | as late as possible | geotech 2 |
| 24 | 1.1.4.9 | conduct training | 2d | 2018-09-07 | 2018-09-10 | 23 |  | as late as possible | geotech 2 |

| ID | WBS | Task | Duration | Start | Finish | Predecessors | Total slack | Constraint | Resources |
| --- | --- | --- | --- | --- | --- | --- | --- | --- | --- |
| 25 | 1.1.5 | **slope stability models (LEM2)** | 125d | 2018-02-09 | 2018-09-10 |  |  |  |  |
| 26 | 1.1.5.1 | review related literature | 5d | 2018-07-16 | 2018-07-20 |  | 9300d | as late as possible | geotech 3 |
| 27 | 1.1.5.2 | develop prototype | 5d | 2018-07-23 | 2018-07-27 | 26 |  | as late as possible | geotech 3 |
| 28 | 1.1.5.3 | test model with monitoring data | 5d | 2018-07-30 | 2018-08-03 | 27, 242 |  | as late as possible | geotech 3 |
| 29 | 1.1.5.4 | field data gathering | 13d | 2018-08-06 | 2018-08-22 | 27, 28 |  | as late as possible | geol 3 |
| 30 | 1.1.5.5 | field data gathering | 13d | 2018-08-06 | 2018-08-22 | 27, 28 |  | as late as possible | geotech 3 |
| 31 | 1.1.5.6 | evaluate model (report as PI of slope stab model) | 3d | 2018-08-23 | 2018-08-27 | 28, 29, 30 |  | as late as possible | geotech 3 |
| 32 | 1.1.5.7 | write report | 5d | 2018-08-28 | 2018-09-03 | 31 |  | as late as possible | geotech 3 |
| 33 | 1.1.5.8 | develop training materials | 3d | 2018-09-04 | 2018-09-06 | 32 |  | as late as possible | geotech 3 |
| 34 | 1.1.5.9 | conduct training | 2d | 2018-09-07 | 2018-09-10 | 33 |  | as late as possible | geotech 3 |
| 35 | 1.1.6 | **runout model 1** | 125d | 2018-02-09 | 2018-09-10 |  |  |  |  |
| 36 | 1.1.6.1 | review related literature | 10d | 2018-07-19 | 2018-08-01 |  | 9500d | as late as possible |  |
| 37 | 1.1.6.2 | develop prototype | 10d | 2018-08-02 | 2018-08-15 | 36 |  | as late as possible | geol 4 |
| 38 | 1.1.6.3 | test model with monitoring data | 5d | 2018-08-16 | 2018-08-22 | 37, 242 |  | as late as possible | geol 4 |
| 39 | 1.1.6.4 | evaluate model (report as PI of runout model) | 3d | 2018-08-23 | 2018-08-27 | 38 |  | as late as possible | geol 4 |
| 40 | 1.1.6.5 | write report | 5d | 2018-08-28 | 2018-09-03 | 39 |  | as late as possible | geol 4 |
| 41 | 1.1.6.6 | develop training materials | 3d | 2018-09-04 | 2018-09-06 | 40 |  | as late as possible | geol 4 |
| 42 | 1.1.6.7 | conduct training | 2d | 2018-09-07 | 2018-09-10 | 41 |  | as late as possible | geol 4 |
| 43 | 1.1.7 | **runout model 2** | 125d | 2018-02-09 | 2018-09-10 |  |  |  |  |
| 44 | 1.1.7.1 | review related literature | 5d | 2018-07-26 | 2018-08-01 |  | 10100d | as late as possible |  |
| 45 | 1.1.7.2 | develop prototype | 10d | 2018-08-02 | 2018-08-15 | 44 |  | as late as possible | geol 5 |
| 46 | 1.1.7.3 | test model with monitoring data | 5d | 2018-08-16 | 2018-08-22 | 45, 242 |  | as late as possible | geol 5 |
| 47 | 1.1.7.4 | evaluate model (report as PI of runout model) | 3d | 2018-08-23 | 2018-08-27 | 46 |  | as late as possible | geol 5 |
| 48 | 1.1.7.5 | write report | 5d | 2018-08-28 | 2018-09-03 | 47 |  | as late as possible | geol 5 |
| 49 | 1.1.7.6 | develop training materials | 3d | 2018-09-04 | 2018-09-06 | 48 |  | as late as possible | geol 5 |
| 50 | 1.1.7.7 | conduct training | 2d | 2018-09-07 | 2018-09-10 | 49 |  | as late as possible | geol 5 |

| ID | WBS | Task | Duration | Start | Finish | Predecessors | Total slack | Constraint | Resources |
| --- | --- | --- | --- | --- | --- | --- | --- | --- | --- |
| 51 | 1.1.8 | **threshold model 1** | 115d | 2018-02-09 | 2018-08-21 |  |  |  |  |
| 52 | 1.1.8.1 | review related literature | 5d | 2018-07-09 | 2018-07-13 |  | 8800d | as late as possible | data scientist 1 |
| 53 | 1.1.8.2 | develop prototype | 14d | 2018-07-16 | 2018-08-02 | 52 |  | as late as possible | data scientist 1 |
| 54 | 1.1.8.3 | implement model alongside operations | 6d | 2018-08-03 | 2018-08-10 | 53, 242 |  | as late as possible | data scientist 1 |
| 55 | 1.1.8.4 | evaluate model (report as PI of threshold model) | 1d | 2018-08-13 | 2018-08-13 | 54, 99 |  | as late as possible | data scientist 1 |
| 56 | 1.1.8.5 | write report | 4d | 2018-08-14 | 2018-08-17 | 55 |  | as late as possible | data scientist 1 |
| 57 | 1.1.8.6 | develop training materials | 1d | 2018-08-20 | 2018-08-20 | 56 |  | as late as possible | data scientist 1 |
| 58 | 1.1.8.7 | conduct training | 1d | 2018-08-21 | 2018-08-21 | 57 |  | as late as possible | data scientist 1 |
| 59 | 1.1.9 | **threshold model 2** | 115d | 2018-02-09 | 2018-08-21 |  |  |  |  |
| 60 | 1.1.9.1 | review related literature | 5d | 2018-07-09 | 2018-07-13 |  | 8800d | as late as possible | data scientist 2 |
| 61 | 1.1.9.2 | develop prototype | 14d | 2018-07-16 | 2018-08-02 | 60 |  | as late as possible | data scientist 2 |
| 62 | 1.1.9.3 | implement model alongside operations | 6d | 2018-08-03 | 2018-08-10 | 61, 242 |  | as late as possible | data scientist 2 |
| 63 | 1.1.9.4 | evaluate model (report as PI of threshold model) | 1d | 2018-08-13 | 2018-08-13 | 62, 99 |  | as late as possible | data scientist 2 |
| 64 | 1.1.9.5 | write report | 4d | 2018-08-14 | 2018-08-17 | 63 |  | as late as possible | data scientist 2 |
| 65 | 1.1.9.6 | develop training materials | 1d | 2018-08-20 | 2018-08-20 | 64 |  | as late as possible | data scientist 2 |
| 66 | 1.1.9.7 | conduct training | 1d | 2018-08-21 | 2018-08-21 | 65 |  | as late as possible | data scientist 2 |
| 67 | 1.1.10 | **threshold model 3** | 115d | 2018-02-09 | 2018-08-21 |  |  |  |  |
| 68 | 1.1.10.1 | review related literature | 5d | 2018-07-09 | 2018-07-13 |  | 8800d | as late as possible | data scientist 3 |
| 69 | 1.1.10.2 | develop prototype | 14d | 2018-07-16 | 2018-08-02 | 68 |  | as late as possible | data scientist 3 |
| 70 | 1.1.10.3 | implement model alongside operations | 6d | 2018-08-03 | 2018-08-10 | 69, 242 |  | as late as possible | data scientist 3 |
| 71 | 1.1.10.4 | evaluate model (report as PI of threshold model) | 1d | 2018-08-13 | 2018-08-13 | 70, 99 |  | as late as possible | data scientist 3 |
| 72 | 1.1.10.5 | write report | 4d | 2018-08-14 | 2018-08-17 | 71 |  | as late as possible | data scientist 3 |
| 73 | 1.1.10.6 | develop training materials | 1d | 2018-08-20 | 2018-08-20 | 72 |  | as late as possible | data scientist 3 |
| 74 | 1.1.10.7 | conduct training | 1d | 2018-08-21 | 2018-08-21 | 73 |  | as late as possible | data scientist 3 |

| ID | WBS | Task | Duration | Start | Finish | Predecessors | Total slack | Constraint | Resources |
| --- | --- | --- | --- | --- | --- | --- | --- | --- | --- |
| 75 | 1.1.11 | **threshold model 4** | 115d | 2018-02-09 | 2018-08-21 |  |  |  |  |
| 76 | 1.1.11.1 | review related literature | 5d | 2018-07-09 | 2018-07-13 |  | 8800d | as late as possible | data scientist 4 |
| 77 | 1.1.11.2 | develop prototype | 14d | 2018-07-16 | 2018-08-02 | 76 |  | as late as possible | data scientist 4 |
| 78 | 1.1.11.3 | implement model alongside operations | 6d | 2018-08-03 | 2018-08-10 | 242, 77 |  | as late as possible | data scientist 4 |
| 79 | 1.1.11.4 | evaluate model (report as PI of threshold model) | 1d | 2018-08-13 | 2018-08-13 | 99, 78 |  | as late as possible | data scientist 4 |
| 80 | 1.1.11.5 | write report | 4d | 2018-08-14 | 2018-08-17 | 79 |  | as late as possible | data scientist 4 |
| 81 | 1.1.11.6 | develop training materials | 1d | 2018-08-20 | 2018-08-20 | 80 |  | as late as possible | data scientist 4 |
| 82 | 1.1.11.7 | conduct training | 1d | 2018-08-21 | 2018-08-21 | 81 |  | as late as possible | data scientist 4 |
| 83 | 1.1.12 | **threshold model 5** | 115d | 2018-02-09 | 2018-08-21 |  |  |  |  |
| 84 | 1.1.12.1 | review related literature | 5d | 2018-07-09 | 2018-07-13 |  | 8800d | as late as possible | data scientist 5 |
| 85 | 1.1.12.2 | develop prototype | 14d | 2018-07-16 | 2018-08-02 | 84 |  | as late as possible | data scientist 5 |
| 86 | 1.1.12.3 | implement model alongside operations | 6d | 2018-08-03 | 2018-08-10 | 85, 242 |  | as late as possible | data scientist 5 |
| 87 | 1.1.12.4 | evaluate model (report as PI of threshold model) | 1d | 2018-08-13 | 2018-08-13 | 86, 99 |  | as late as possible | data scientist 5 |
| 88 | 1.1.12.5 | write report | 4d | 2018-08-14 | 2018-08-17 | 87 |  | as late as possible | data scientist 5 |
| 89 | 1.1.12.6 | develop training materials | 1d | 2018-08-20 | 2018-08-20 | 88 |  | as late as possible | data scientist 5 |
| 90 | 1.1.12.7 | conduct training | 1d | 2018-08-21 | 2018-08-21 | 89 |  | as late as possible | data scientist 5 |
| 91 | 1.1.13 | **threshold model 6** | 115d | 2018-02-09 | 2018-08-21 |  |  |  |  |
| 92 | 1.1.13.1 | review related literature | 5d | 2018-07-09 | 2018-07-13 |  | 8800d | as late as possible | data scientist 6 |
| 93 | 1.1.13.2 | develop prototype | 14d | 2018-07-16 | 2018-08-02 | 92 |  | as late as possible | data scientist 6 |
| 94 | 1.1.13.3 | implement model alongside operations | 6d | 2018-08-03 | 2018-08-10 | 93, 242 |  | as late as possible | data scientist 6 |
| 95 | 1.1.13.4 | evaluate model (report as PI of threshold model) | 1d | 2018-08-13 | 2018-08-13 | 94, 99 |  | as late as possible | data scientist 6 |
| 96 | 1.1.13.5 | write report | 4d | 2018-08-14 | 2018-08-17 | 95 |  | as late as possible | data scientist 6 |
| 97 | 1.1.13.6 | develop training materials | 1d | 2018-08-20 | 2018-08-20 | 96 |  | as late as possible | data scientist 6 |
| 98 | 1.1.13.7 | conduct training | 1d | 2018-08-21 | 2018-08-21 | 97 |  | as late as possible | data scientist 6 |
| 99 | 1.1.14 | develop threshold performance index | 12d | 2018-07-26 | 2018-08-10 |  | 9800d | as late as possible | data scientist 7 |

| ID | WBS | Task | Duration | Start | Finish | Predecessors | Total slack | Constraint | Resources |
| --- | --- | --- | --- | --- | --- | --- | --- | --- | --- |
| 100 | 1.2 | **methods report (C&V)** | 125d | 2018-02-09 | 2018-09-10 |  |  |  |  |
| 101 | 1.2.1 | **method 1** | 125d | 2018-02-09 | 2018-09-10 |  |  |  |  |
| 102 | 1.2.1.1 | evaluate C&V frameworks (explore REDAS as one of the frameworks/models) | 14d | 2018-07-13 | 2018-08-01 |  | 9200d | as late as possible | social scientist 1 |
| 103 | 1.2.1.2 | development of C&V assessment modules | 13d | 2018-08-02 | 2018-08-20 | 102 |  | as late as possible | social scientist 1 |
| 104 | 1.2.1.3 | recommend C&V info system | 5d | 2018-09-04 | 2018-09-10 | 103 | 700d | as late as possible | social scientist 1 |
| 105 | 1.2.1.4 | design database (linking to EWSL data storage and management)) | 5d | 2018-08-31 | 2018-09-06 | 102 | 1600d | as late as possible | social scientist 1 |
| 106 | 1.2.1.5 | write report | 2d | 2018-09-07 | 2018-09-10 | 105 |  | as late as possible | social scientist 1 |
| 107 | 1.2.1.6 | develop training materials | 10d | 2018-08-21 | 2018-09-03 | 103 |  | as late as possible | social scientist 1 |
| 108 | 1.2.1.7 | conduct training | 5d | 2018-09-04 | 2018-09-10 | 107 |  | as late as possible | social scientist 1 |
| 109 | 1.2.2 | **method 2** | 34d | 2018-07-13 | 2018-09-10 |  |  |  |  |
| 110 | 1.2.2.1 | evaluate C&V frameworks (explore REDAS as one of the frameworks/models) | 14d | 2018-07-13 | 2018-08-01 | 120 |  | as late as possible | social scientist 2 |
| 111 | 1.2.2.2 | development of C&V assessment modules | 13d | 2018-08-02 | 2018-08-20 | 110 |  | as late as possible | social scientist 2 |
| 112 | 1.2.2.3 | recommend C&V info system | 5d | 2018-09-04 | 2018-09-10 | 111 | 700d | as late as possible | social scientist 2 |
| 113 | 1.2.2.4 | design database (linking to EWSL data storage and management)) | 5d | 2018-08-31 | 2018-09-06 | 110 | 1600d | as late as possible | social scientist 2 |
| 114 | 1.2.2.5 | write report | 2d | 2018-09-07 | 2018-09-10 | 113 |  | as late as possible | social scientist 2 |
| 115 | 1.2.2.6 | develop training materials | 10d | 2018-08-21 | 2018-09-03 | 111 |  | as late as possible | social scientist 2 |
| 116 | 1.2.2.7 | conduct training | 5d | 2018-09-04 | 2018-09-10 | 115 |  | as late as possible | social scientist 2 |
| 117 | 1.3 | **methods report (Risk)** | 125d | 2018-02-09 | 2018-09-10 |  |  |  |  |
| 118 | 1.3.1 | evaluate frameworks for risk | 14d | 2018-06-05 | 2018-06-22 |  | 6700d | as late as possible | DRRS 1 |
| 119 | 1.3.2 | develop methods | 12d | 2018-06-25 | 2018-07-10 | 118 |  | as late as possible | DRRS 1 |
| 120 | 1.3.3 | write report | 2d | 2018-07-11 | 2018-07-12 | 119 |  | as late as possible | DRRS 1 |
| 121 | 1.3.4 | develop training materials | 10d | 2018-07-17 | 2018-07-30 | 120 | 200d | as late as possible | DRRS 1 |
| 122 | 1.3.5 | conduct training (NC 3) | 30d | 2018-07-31 | 2018-09-10 | 121 |  | as late as possible | DRRS 1 |
| 123 | 1.4 | **per site landslide risk reports (focus sites)** | 125d | 2018-02-09 | 2018-09-10 |  |  |  |  |
| 124 | 1.4.1 | integration of hazard, capacity, and vulnerability information | 7d | 2018-08-31 | 2018-09-10 | 119, 158, 163 |  | as late as possible | DRRS 1 |

| ID | WBS | Task | Duration | Start | Finish | Predecessors | Total slack | Constraint | Resources |
| --- | --- | --- | --- | --- | --- | --- | --- | --- | --- |
| 125 | 1.4.2 | **per site hazard reports (rts/rtk) total=11sites** | 23d | 2018-02-09 | 2018-03-19 |  | 10200d |  |  |
| 126 | 1.4.2.1 | consolidate field notes | 4d | 2018-02-09 | 2018-02-14 |  | 10500d |  |  |
| 127 | 1.4.2.2 | conduct quarterly survey (RTS/RTK/remap) | 12d | 2018-02-15 | 2018-03-05 | 126 | 10400d |  |  |
| 128 | 1.4.2.3 | analyze monitoring data (requires access to database) | 2d | 2018-03-06 | 2018-03-07 | 127 | 10500d |  |  |
| 129 | 1.4.2.4 | update volume, depth, extent (using current models) | 2d | 2018-03-08 | 2018-03-09 | 128 | 10800d |  |  |
| 130 | 1.4.2.5 | update thresholds with monitoring data and performance index | 2d | 2018-03-08 | 2018-03-09 | 128 | 10400d |  |  |
| 131 | 1.4.2.6 | update per site hazard reports (updated maps as PI) | 6d | 2018-03-12 | 2018-03-19 | 130 | 10200d |  |  |
| 132 | 1.4.3 | **per site hazard reports (5 sites)** | 4d | 2018-02-09 | 2018-02-14 |  | 12200d |  |  |
| 133 | 1.4.3.1 | conduct fieldwork (resurvey) | 4d | 2018-02-09 | 2018-02-14 |  | 12200d |  |  |
| 134 | 1.4.3.2 | consolidate field notes | 1d | 2018-02-09 | 2018-02-09 |  | 12400d |  |  |
| 135 | 1.4.3.3 | review and identify active sites | 0.5d | 2018-02-09 | 2018-02-09 |  | 12450d |  |  |
| 136 | 1.4.3.4 | analyze monitoring data (requires access to database) | 2d | 2018-02-09 | 2018-02-12 |  | 12300d |  |  |
| 137 | 1.4.3.5 | update volume, depth, extent (using current models) | 1d | 2018-02-09 | 2018-02-09 |  | 12400d |  |  |
| 138 | 1.4.3.6 | update thresholds with monitoring data and performance index | 2d | 2018-02-09 | 2018-02-12 |  | 12300d |  |  |
| 139 | 1.4.3.7 | update per site hazard reports (updated maps as PI) | 3d | 2018-02-09 | 2018-02-13 |  | 12300d |  |  |
| 140 | 1.4.3.8 | per site capacity and vulnerability reports (focus sites) | 2d | 2018-02-09 | 2018-02-12 |  | 12300d |  |  |
| 142 | 1.4.4 | **per site hazard reports (50-11-5=34)** | 2d | 2018-02-09 | 2018-02-12 |  | 12300d |  |  |
| 143 | 1.4.4.1 | analyze monitoring data (requires access to database) | 1d | 2018-02-09 | 2018-02-09 |  | 12400d |  |  |
| 144 | 1.4.4.2 | update volume, depth, extent (using current models) | 1d | 2018-02-09 | 2018-02-09 |  | 12400d |  |  |
| 145 | 1.4.4.3 | update thresholds with monitoring data and performance index | 1d | 2018-02-09 | 2018-02-09 |  | 12400d |  |  |
| 146 | 1.4.4.4 | update per site hazard reports (updated maps as PI) | 2d | 2018-02-09 | 2018-02-12 |  | 12300d |  |  |
| 147 | 1.4.4.5 | per site capacity and vulnerability reports (focus sites) | 1d | 2018-02-09 | 2018-02-09 |  | 12400d |  |  |
| 154 | 1.4.5 | **per site capacity and vulnerability report (SITE 2, Mindanao)** | 121d | 2018-02-09 | 2018-08-30 |  |  |  |  |
| 155 | 1.4.5.1 | conduct data gathering | 11d | 2018-07-17 | 2018-07-31 |  | 9400d | as late as possible | social scientist 3 |
| 156 | 1.4.5.2 | conduct data gathering | 11d | 2018-07-17 | 2018-07-31 |  | 9400d | as late as possible | social scientist 1 |
| 157 | 1.4.5.3 | analyze data | 17d | 2018-08-01 | 2018-08-23 | 155, 156 |  | as late as possible | social scientist 3 |
| 158 | 1.4.5.4 | update per site capacity and vulnerability reports | 5d | 2018-08-24 | 2018-08-30 | 157 |  | as late as possible | social scientist 3 |

| ID | WBS | Task | Duration | Start | Finish | Predecessors | Total slack | Constraint | Resources |
| --- | --- | --- | --- | --- | --- | --- | --- | --- | --- |
| 159 | 1.4.6 | **per site capacity and vulnerability report (SITE 2, Mindanao)** | 121d | 2018-02-09 | 2018-08-30 |  |  |  |  |
| 160 | 1.4.6.1 | conduct data gathering | 11d | 2018-07-06 | 2018-07-20 |  | 8600d | as late as possible |  |
| 161 | 1.4.6.2 | conduct data gathering | 11d | 2018-07-06 | 2018-07-20 |  | 8700d | as late as possible | social scientist 2 |
| 162 | 1.4.6.3 | analyze data | 20d | 2018-07-23 | 2018-08-23 | 161, 160 |  | as late as possible |  |
| 163 | 1.4.6.4 | update per site capacity and vulnerability reports | 5d | 2018-08-24 | 2018-08-30 | 162 |  | as late as possible |  |
| 164 | 1.5 | **"Alert protocol" -- essentually how risk knowledge informs early warning practice** | 118d | 2018-02-09 | 2018-08-24 |  |  |  |  |
| 165 | 1.5.1 | review of related literature | 14d | 2018-07-20 | 2018-08-08 |  | 9700d | as late as possible | DRRS 2 |
| 166 | 1.5.2 | review and evaluate current alert protocol | 10d | 2018-08-09 | 2018-08-22 | 165 |  | as late as possible | DRRS 2 |
| 167 | 1.5.3 | recomend alert protocol | 2d | 2018-08-23 | 2018-08-24 | 166 |  | as late as possible | DRRS 2 |
| 168 | 2 | **Early warning system for landslides** | 126d? | 2018-02-09 | 2018-09-11 |  | -100d |  |  |
| 169 | 2.1 | **Data gathering system** | 125d | 2018-02-09 | 2018-09-10 |  |  |  |  |
| 170 | 2.1.1 | **community reported data** | 111d | 2018-02-09 | 2018-08-14 |  | 1400d |  |  |
| 171 | 2.1.1.1 | provide initial performance metrics based on 2017 experience | 1d | 2018-02-09 | 2018-02-09 |  | 11300d |  |  |
| 172 | 2.1.1.2 | improve means of gathering surficial data (including transmission) | 37d | 2018-07-10 | 2018-09-10 | 286 | 1400d | as late as possible |  |
| 173 | 2.1.1.3 | develop on the ground validation of rainfall via sensors | 37d | 2018-07-10 | 2018-09-10 |  | 8800d | as late as possible |  |
| 174 | 2.1.2 | **tilt** | 125d | 2018-02-09 | 2018-09-10 |  |  |  |  |
| 175 | 2.1.2.1 | provide initial performance metrics based on 2017 experience | 1d | 2018-02-09 | 2018-02-09 |  | 11300d |  |  |
| 176 | 2.1.2.2 | characterize tilt sensor(angle range and accuracy of v3 tilt sensor) | 7d | 2018-02-09 | 2018-02-19 |  | 11900d |  | emb engr 1 |
| 177 | 2.1.2.3 | develop tilt sensor feature 1(improve angle range, accuracy,packaging,coms) | 20d | 2018-02-09 | 2018-03-14 |  | 10500d |  |  |
| 178 | 2.1.2.4 | develop tilt sensor feature 2(improve angle range, accuracy,packaging,coms) | 20d | 2018-02-09 | 2018-03-14 |  | 10500d |  |  |
| 179 | 2.1.2.5 | prepare manufacturing documents (project to phivolcs --admin heavy task ito) | 20d | 2018-02-09 | 2018-03-14 |  | 10500d |  |  |
| 180 | 2.1.2.6 | **manufacturing monitoring** | 125d | 2018-02-09 | 2018-09-10 |  |  |  |  |
| 181 | 2.1.2.6.1 | develop functionality tests | 10d | 2018-02-09 | 2018-02-23 |  | 400d |  |  |
| 182 | 2.1.2.6.2 | manufacture | 105d | 2018-02-26 | 2018-08-21 | 181 | 100d |  |  |
| 183 | 2.1.2.6.3 | troubleshoot manufacturing issues | 105d | 2018-02-26 | 2018-08-21 | 181 | 1000d |  |  |
| 184 | 2.1.2.6.4 | evaluate sample boards | 10d | 2018-08-22 | 2018-09-10 | 182 |  |  |  |
| 185 | 2.1.2.7 | develop and implement filters | 8d | 2018-02-09 | 2018-02-21 |  | 11700d |  |  |
| 186 | 2.1.2.8 | deployment of new tilt sensors | 5d | 2018-02-09 | 2018-02-15 |  | 12100d |  |  |

Notes:
- 164: trigger to alert + alert to dissemination
- 169: every product should have performance metrics included in its PI PI should include documentation per product
- 180: Fractional

| ID | WBS | Task | Duration | Start | Finish | Predecessors | Total slack | Constraint | Resources |
| --- | --- | --- | --- | --- | --- | --- | --- | --- | --- |
| 187 | 2.1.3 | **soms** | 54d | 2018-02-09 | 2018-05-14 |  | 7100d |  |  |
| 188 | 2.1.3.1 | provide initial performance metrics based on 2017 experience | 1d | 2018-02-09 | 2018-02-09 |  | 11300d |  |  |
| 189 | 2.1.3.2 | soms characterization 1 (gravimetric site-specific) | 20d | 2018-02-09 | 2018-03-14 |  | 10500d |  |  |
| 190 | 2.1.3.3 | soms characterization 2 (borehole infiltration versus non-borehole infiltration) | 10d | 2018-02-09 | 2018-02-23 |  | 11500d |  |  |
| 191 | 2.1.3.4 | soms characterization 3 (rainfall-soil moisture correlation with visual water infiltration) | 5d | 2018-02-09 | 2018-02-15 |  | 12100d |  |  |
| 192 | 2.1.3.5 | improve soms probe and its orientation | 20d | 2018-02-09 | 2018-03-14 |  | 7200d |  |  |
| 193 | 2.1.3.6 | develop new soil moisture sensor (improve accuracy, packaging, coms) prototype | 20d | 2018-03-15 | 2018-04-18 | 192 | 7200d |  |  |
| 194 | 2.1.3.7 | deploy new soms | 5d | 2018-04-19 | 2018-04-25 | 193 | 7200d |  |  |
| 195 | 2.1.3.8 | develop filter | 6d | 2018-04-26 | 2018-05-07 | 194 | 7300d |  |  |
| 196 | 2.1.3.9 | implement filter | 5d | 2018-05-08 | 2018-05-14 | 195 | 7100d |  |  |
| 197 | 2.1.4 | **uts-ext** | 125d | 2018-02-09 | 2018-09-10 |  |  |  |  |
| 198 | 2.1.4.1 | provide initial performance metrics based on 2017 experience | 1d | 2018-02-09 | 2018-02-09 |  | 11300d |  |  |
| 199 | 2.1.4.2 | char-dev-dep | 52d | 2018-05-30 | 2018-08-09 |  | 6500d | as late as possible | emb engr 3 |
| 200 | 2.1.4.3 | develop filter | 19d | 2018-08-10 | 2018-09-05 | 199 |  | as late as possible | emb engr 3 |
| 201 | 2.1.4.4 | implement filter | 3d | 2018-09-06 | 2018-09-10 | 200 |  | as late as possible | emb engr 3 |
| 202 | 2.1.5 | **lidar-ext** | 125d | 2018-02-09 | 2018-09-10 |  |  |  |  |
| 203 | 2.1.5.1 | provide initial performance metrics based on 2017 experience | 1d | 2018-02-09 | 2018-02-09 |  | 11300d |  |  |
| 204 | 2.1.5.2 | char-dev-dep | 52d | 2018-05-30 | 2018-08-09 |  | 6500d | as late as possible | emb engr 4 |
| 205 | 2.1.5.3 | develop filter | 19d | 2018-08-10 | 2018-09-05 | 204 |  | as late as possible | emb engr 4 |
| 206 | 2.1.5.4 | implement filter | 3d | 2018-09-06 | 2018-09-10 | 205 |  | as late as possible | emb engr 4 |
| 207 | 2.1.6 | **rain gauge** | 125d | 2018-02-09 | 2018-09-10 |  |  |  |  |
| 208 | 2.1.6.1 | provide initial performance metrics based on 2017 experience | 1d | 2018-02-09 | 2018-02-09 |  | 11300d |  |  |
| 209 | 2.1.6.2 | char-dev-dep | 26d | 2018-07-13 | 2018-08-17 |  | 9200d | as late as possible | emb engr 5 |
| 210 | 2.1.6.3 | develop filter | 11d | 2018-08-20 | 2018-09-03 | 209 |  | as late as possible | emb engr 5 |
| 211 | 2.1.6.4 | implement filter | 5d | 2018-09-04 | 2018-09-10 | 210 |  | as late as possible | emb engr 5 |

| ID | WBS | Task | Duration | Start | Finish | Predecessors | Total slack | Constraint | Resources |
| --- | --- | --- | --- | --- | --- | --- | --- | --- | --- |
| 212 | 2.1.7 | **piezometer** | 125d | 2018-02-09 | 2018-09-10 |  |  |  |  |
| 213 | 2.1.7.1 | provide initial performance metrics based on 2017 experience | 1d | 2018-02-09 | 2018-02-09 |  | 11300d |  |  |
| 214 | 2.1.7.2 | char-dev-dep | 16d | 2018-08-08 | 2018-08-29 |  | 10600d | as late as possible | emb engr 6 |
| 215 | 2.1.7.3 | develop filter | 5d | 2018-08-30 | 2018-09-05 | 214 |  | as late as possible | emb engr 6 |
| 216 | 2.1.7.4 | implement filter | 3d | 2018-09-06 | 2018-09-10 | 215 |  | as late as possible | emb engr 6 |
| 217 | 2.1.8 | **gateway datalogger** | 28d | 2018-02-09 | 2018-03-26 |  | 8600d |  |  |
| 218 | 2.1.8.1 | provide initial performance metrics based on 2017 experience | 1d | 2018-02-09 | 2018-02-09 |  | 11300d |  |  |
| 219 | 2.1.8.2 | char-dev-dep | 32d | 2018-07-02 | 2018-08-14 |  | 8300d | as late as possible | emb engr 7 |
| 220 | 2.1.9 | **router datalogger** | 12d | 2018-02-09 | 2018-02-27 |  | 11300d |  |  |
| 221 | 2.1.9.1 | provide initial performance metrics based on 2017 experience | 1d | 2018-02-09 | 2018-02-09 |  | 11300d |  |  |
| 222 | 2.1.9.2 | char-dev-dep | 13d | 2018-08-23 | 2018-09-10 |  | 11300d | as late as possible | emb engr 7 |
| 223 | 2.1.10 | **sensor datalogger** | 47d | 2018-02-09 | 2018-04-27 |  | 7800d |  |  |
| 224 | 2.1.10.1 | provide initial performance metrics based on 2017 experience | 1d | 2018-02-09 | 2018-02-09 |  | 11300d |  |  |
| 225 | 2.1.10.2 | develop sensor datalogger feature 1( rtc, low-power, xbee interface, bluetooth interface) | 10d | 2018-02-09 | 2018-02-23 |  | 11500d |  |  |
| 226 | 2.1.10.3 | develop sensor datalogger feature 2( rtc, low-power, xbee interface, bluetooth interface) | 10d | 2018-02-09 | 2018-02-23 |  | 11500d |  |  |
| 227 | 2.1.10.4 | prepare manufacturing documents | 20d | 2018-02-09 | 2018-03-14 |  | 10500d |  |  |
| 228 | 2.1.10.5 | **manufacturing monitoring** | 47d | 2018-02-09 | 2018-04-27 |  | 7800d |  |  |
| 229 | 2.1.10.5.1 | develop functionality tests | 3d | 2018-02-09 | 2018-02-13 |  | 8100d |  |  |
| 230 | 2.1.10.5.2 | manufacture | 40d | 2018-02-14 | 2018-04-20 | 229 | 7900d |  |  |
| 231 | 2.1.10.5.3 | troubleshoot manufacturing issues | 40d | 2018-02-14 | 2018-04-20 | 229 | 8300d |  |  |
| 232 | 2.1.10.5.4 | evaluate sample boards | 5d | 2018-04-23 | 2018-04-27 | 230 | 7800d |  |  |
| 233 | 2.1.11 | **stand alone datalogger** | 14d | 2018-02-09 | 2018-03-05 |  | 10000d |  |  |
| 234 | 2.1.11.1 | provide initial performance metrics based on 2017 experience | 1d | 2018-02-09 | 2018-02-09 |  | 11300d |  |  |
| 235 | 2.1.11.2 | char-dev-dep | 17d | 2018-07-23 | 2018-08-14 |  | 9700d | as late as possible | emb engr 7 |

| ID | WBS | Task | Duration | Start | Finish | Predecessors | Total slack | Constraint | Resources |
| --- | --- | --- | --- | --- | --- | --- | --- | --- | --- |
| 236 | 2.2 | **SMS parsing system for new data structures** | 15d | 2018-08-15 | 2018-09-11 |  | -100d |  |  |
| 237 | 2.2.1 | develop sms parsing system | 15d | 2018-08-15 | 2018-09-10 | 219, 235 | -100d | as late as possible |  |
| 238 | 2.3 | **Data storage and management system** | 114d | 2018-02-09 | 2018-08-17 |  |  |  |  |
| 239 | 2.3.1 | develop new structure for storage and management | 15d | 2018-06-28 | 2018-07-18 |  | 8100d | as late as possible | sys ad 1 |
| 240 | 2.3.2 | develop automated backup | 9d | 2018-07-31 | 2018-08-10 | 239 | 500d | as late as possible | sys ad 1 |
| 241 | 2.3.3 | recommend performance metrics | 5d | 2018-08-13 | 2018-08-17 | 240 |  | as late as possible | sys ad 1 |
| 242 | 2.3.4 | develop data access for risk assessment | 7d | 2018-07-19 | 2018-07-27 | 239 |  | as late as possible | sys ad 2 |
| 243 | 2.4 | **Data analysis system** | 125d? | 2018-02-09 | 2018-09-10 |  |  |  |  |
| 244 | 2.4.1 | **threshold scripts** | 1d | 2018-08-22 | 2018-08-22 |  |  |  |  |
| 245 | 2.4.1.1 | implement thresholds | 1d | 2018-08-22 | 2018-08-22 | 58, 66, 74, 82, 90, 98 |  | as late as possible | data scientist 7 |
| 246 | 2.4.2 | **visualization scripts** | 125d? | 2018-02-09 | 2018-09-10 |  |  |  |  |
| 247 | 2.4.2.1 | research data visualization concepts (inc. hazard concepts) | 10d | 2018-08-08 | 2018-08-22 |  | 10600d | as late as possible |  |
| 248 | 2.4.2.2 | develop new web charts | 13d | 2018-08-23 | 2018-09-10 | 245, 247 |  |  | eletech |
| 249 | 2.4.2.3 | improvement of existing web charts | 1d? | 2018-09-10 | 2018-09-10 |  | 12400d | as late as possible | full stack dev 2 |
| 250 | 2.4.2.4 | improvement of webchart generation | 1d? | 2018-09-10 | 2018-09-10 |  | 12400d | as late as possible | full stack dev 2 |
| 251 | 2.4.2.5 | provide initial performance metrics based on 2017 experience | 1d | 2018-02-09 | 2018-02-09 |  | 12400d |  | eletech |
| 252 | 2.4.3 | recommend performance metrics | 1d | 2018-08-17 | 2018-08-17 |  | 11300d | as late as possible | data scientist 7 |
| 253 | 2.4.4 | draft process profile (recomm to automation integration) | 2d | 2018-08-24 | 2018-08-27 |  | 11700d | as late as possible | data scientist 7 |
| 254 | 2.5 | **Dissemination system** | 125d? | 2018-02-09 | 2018-09-10 |  |  |  |  |
| 255 | 2.5.1 | **alert generation module** | 125d | 2018-02-09 | 2018-09-10 |  |  |  |  |
| 256 | 2.5.1.1 | create modularized infrastructure for different operational triggers | 5d | 2018-09-04 | 2018-09-10 |  | 12100d | as late as possible | programmer 1 |
| 257 | 2.5.1.2 | create "special cases" tables (e.g., Puguis) | 5d | 2018-08-31 | 2018-09-06 |  | 12100d | as late as possible | programmer 1 |
| 258 | 2.5.1.3 | implement alert protocol (trigger to alert) revisions | 2d | 2018-09-07 | 2018-09-10 | 167, 257 |  | as late as possible | programmer 1 |
| 259 | 2.5.1.4 | recommend performance metrics (in relation to automation) | 1d | 2018-08-17 | 2018-08-17 |  | 11300d | as late as possible | programmer 1 |
| 260 | 2.5.1.5 | draft process profile (recomm to automation integration) | 2d | 2018-08-24 | 2018-08-27 |  | 11700d | as late as possible | programmer 1 |

Notes:
- 238: fractional activity
- 243: each system should have a performance metrics document as its PI
- 248: for 6 new web charts developed under LRI
- 249: should include speed of generation of charts
- 250: fractional

| ID | WBS | Task | Duration | Start | Finish | Predecessors | Total slack | Constraint | Resources |
| --- | --- | --- | --- | --- | --- | --- | --- | --- | --- |
| 261 | 2.5.2 | **GSM module server** | 11d? | 2018-02-09 | 2018-02-26 |  | 11400d |  |  |
| 262 | 2.5.2.1 | **develop new GSM module server features** | 11d | 2018-02-09 | 2018-02-26 |  | 11400d |  |  |
| 263 | 2.5.2.1.1 | develop power autonomy | 12d | 2018-02-09 | 2018-02-26 |  | 10300d |  | emb engr 8 |
| 264 | 2.5.2.1.2 | develop multiple gsm module hardware | 12d | 2018-02-09 | 2018-02-26 |  | 11400d |  | emb engr 8 |
| 265 | 2.5.2.2 | implement new feature requests | 1d? | 2018-02-09 | 2018-02-09 |  | 12400d |  | emb engr 8 |
| 266 | 2.5.2.3 | recommend performance metrics (in relation to automation) | 1d | 2018-08-17 | 2018-08-17 |  | 11300d | as late as possible | emb engr 8 |
| 267 | 2.5.2.4 | draft process profile (recomm to automation integration) | 2d | 2018-08-24 | 2018-08-27 |  | 11700d | as late as possible | emb engr 8 |
| 268 | 2.5.3 | **chatterbox** | 3d? | 2018-02-09 | 2018-02-13 |  | 12300d |  |  |
| 269 | 2.5.3.1 | revise scripts for SMS generation and sending (automation?) | 3d | 2018-09-06 | 2018-09-10 |  | 12300d | as late as possible | full stack dev 3 |
| 270 | 2.5.3.2 | implement feature requests | 1d? | 2018-09-10 | 2018-09-10 |  | 12400d | as late as possible | full stack dev 3 |
| 271 | 2.5.3.3 | improve performance | 1d? | 2018-09-10 | 2018-09-10 |  | 12400d | as late as possible | full stack dev 3 |
| 272 | 2.5.3.4 | recommend performance metrics (in relation to automation) | 1d | 2018-08-17 | 2018-08-17 |  | 11300d | as late as possible | full stack dev 3 |
| 273 | 2.5.3.5 | draft process profile (recomm to automation integration) | 2d | 2018-08-24 | 2018-08-27 |  | 11700d | as late as possible | full stack dev 3 |
| 274 | 2.5.4 | **webcall** | 115d | 2018-02-09 | 2018-08-21 |  | 400d |  |  |
| 275 | 2.5.4.1 | acquire, implement hardware | 31d | 2018-06-18 | 2018-07-30 |  | 7600d | as late as possible | full stack dev 4 |
| 276 | 2.5.4.2 | develop/integrate software | 13d | 2018-07-31 | 2018-08-16 | 275 |  | as late as possible | full stack dev 4 |
| 277 | 2.5.4.3 | recommend performance metrics (in relation to automation) | 1d | 2018-08-17 | 2018-08-17 | 276 |  | as late as possible | full stack dev 4 |
| 278 | 2.5.4.4 | draft process profile (recomm to automation integration) | 2d | 2018-08-24 | 2018-08-27 | 277 | 400d | as late as possible | full stack dev 4 |
| 279 | 2.5.5 | **bulletin generator** | 5d? | 2018-02-09 | 2018-02-15 |  | 12100d |  |  |
| 280 | 2.5.5.1 | revise scripts for bulletin generation and sending (automation?) | 5d | 2018-09-04 | 2018-09-10 |  | 12100d | as late as possible |  |
| 281 | 2.5.5.2 | implement feature requests | 1d? | 2018-02-09 | 2018-02-09 |  | 12400d |  |  |
| 282 | 2.5.5.3 | improve performance | 1d? | 2018-09-10 | 2018-09-10 |  | 12400d | as late as possible |  |
| 283 | 2.5.5.4 | recommend performance metrics (in relation to automation) | 1d | 2018-08-17 | 2018-08-17 |  | 11300d | as late as possible |  |
| 284 | 2.5.5.5 | draft process profile (recomm to automation integration) | 2d | 2018-08-24 | 2018-08-27 |  | 11700d | as late as possible |  |

Notes:
- 265: Agile / Fractional
- 270: Fractional (Agile)
- 271: Agile
- 275: Acquisition of hardware will take some time
- 281: Agile (Fractional)
- 282: Agile (Fractional)

| ID | WBS | Task | Duration | Start | Finish | Predecessors | Total slack | Constraint | Resources |
| --- | --- | --- | --- | --- | --- | --- | --- | --- | --- |
| 285 | 2.6 | **Local Info system (ISD)** | 125d | 2018-02-09 | 2018-09-10 |  |  |  |  |
| 286 | 2.6.1 | consolidate recommendations into ict specifications | 7d | 2018-06-06 | 2018-06-14 |  | 6800d | as late as possible | analyst 1 |
| 287 | 2.6.2 | use case testing | 30d | 2018-07-31 | 2018-09-10 | 286 | 2400d | as late as possible | analyst 1 |
| 288 | 2.6.3 | develop local codes updating system | 10d | 2018-08-28 | 2018-09-10 | 286 | 4100d | as late as possible | programmer 2 |
| 289 | 2.6.4 | port ews-l modules | 62d | 2018-06-15 | 2018-09-10 | 286 |  | as late as possible | programmer 2 |
| 290 | 2.7 | **Automation integration system** | 125d | 2018-02-09 | 2018-09-10 |  |  |  |  |
| 291 | 2.7.1 | automate recommended processes | 10d | 2018-08-28 | 2018-09-10 | 253, 260, 267, 273, 278, 284 |  | as late as possible | programmer 3 |
| 292 | 2.7.2 | recommend performance metrics | 2d | 2018-02-09 | 2018-02-12 |  | 11200d |  | programmer 3 |
| 293 | 2.8 | **Performance monitoring system of central system** | 125d? | 2018-02-09 | 2018-09-10 |  |  |  |  |
| 294 | 2.8.1 | consolidate recommendations for performance metrics | 1d? | 2018-08-20 | 2018-08-20 | 171, 175, 188, 198, 203, 208, 213, 218, 221, 224, 234, 241, 252, 259, 263, 266, 272, 277, 283, 292 |  | as late as possible | MEAL officer 1 |
| 295 | 2.8.2 | develop performance targets | 1d? | 2018-02-09 | 2018-02-09 |  | 12400d |  |  |
| 296 | 2.8.3 | **Performance monitoring system** | 11d? | 2018-08-21 | 2018-09-10 |  |  |  |  |
| 297 | 2.8.3.1 | develop PMS backbone stable version | 10d | 2018-08-21 | 2018-09-03 | 294 |  |  | programmer 4 |
| 298 | 2.8.3.2 | maintain PMS | 1d? | 2018-09-04 | 2018-09-04 | 297 | 400d |  |  |
| 299 | 2.8.3.3 | develop agile PMS components | 1d? | 2018-09-04 | 2018-09-04 | 297 | 400d |  |  |
| 300 | 2.8.3.4 | develop generic visualization charts | 5d | 2018-09-04 | 2018-09-10 | 297 |  |  |  |
| 301 | 2.8.4 | establish baseline | 1d? | 2018-02-09 | 2018-02-09 |  | 12400d |  |  |
| 302 | 2.9 | **Organized Local Early Warning Committee (LEWC)** | 125d | 2018-02-09 | 2018-09-10 |  |  |  |  |
| 303 | 2.9.1 | **LEWC org structure and mission/vision (47 sites)** | 125d | 2018-02-09 | 2018-09-10 |  |  |  |  |
| 304 | 2.9.1.1 | prepare modules | 14d | 2018-07-11 | 2018-07-30 |  | 9000d | as late as possible | comm dev 1 |
| 305 | 2.9.1.2 | conduct training/ gather data | 30d | 2018-07-31 | 2018-09-10 | 304 |  | as late as possible | facilitator 1 |
| 306 | 2.9.2 | **Guidelines for community organizing (2 sites)** | 125d | 2018-02-09 | 2018-09-10 |  |  |  |  |
| 307 | 2.9.2.1 | develop methods for community organizing | 30d | 2018-07-06 | 2018-08-16 |  | 8700d | as late as possible | comm dev 2 |
| 308 | 2.9.2.2 | gather data (fieldwork) | 10d | 2018-08-17 | 2018-08-30 | 307 |  | as late as possible | facilitator 2 |
| 309 | 2.9.2.3 | recommend activities for community organizing | 7d | 2018-08-31 | 2018-09-10 | 308 |  | as late as possible | comm dev 2 |

Notes:
- 289: Define duration and number of resources after the ICT report
- 297: PI: should be able to produce a report, either on-demand or periodically
- 298: fractional
- 299: fractional
- 303: (focus sites)

| ID | WBS | Task | Duration | Start | Finish | Predecessors | Total slack | Constraint | Resources |
| --- | --- | --- | --- | --- | --- | --- | --- | --- | --- |
| 310 | 2.9.3 | **develop guidelines for institutionalization of LEWC (2 sites)** | 125d | 2018-02-09 | 2018-09-10 |  |  |  |  |
| 311 | 2.9.3.1 | develop methods for crafing guidelines | 30d | 2018-07-06 | 2018-08-16 |  | 8700d | as late as possible | comm dev 3 |
| 312 | 2.9.3.2 | gather data (fieldwork) | 10d | 2018-08-17 | 2018-08-30 | 311 |  | as late as possible | facilitator 3 |
| 313 | 2.9.3.3 | develop guidelines for institutionalization of LEWC | 7d | 2018-08-31 | 2018-09-10 | 312 |  | as late as possible | comm dev 3 |
| 314 | 2.10 | **Guidelines for developing contingency plans for DSL (barangay level)** | 125d | 2018-02-09 | 2018-09-10 |  |  |  |  |
| 315 | 2.10.1 | review literature on contingency plans | 22d | 2018-07-27 | 2018-08-27 |  | 10100d | as late as possible | social scientist 3 |
| 316 | 2.10.2 | draft guidelines for contingency plans | 5d | 2018-08-28 | 2018-09-03 | 315 |  | as late as possible | social scientist 3 |
| 317 | 2.10.3 | approve guidelines for contingency plans | 5d | 2018-09-04 | 2018-09-10 | 316 |  | as late as possible | social scientist 3 |
| 318 | 2.11 | **Operations manual** | 8d | 2018-08-27 | 2018-09-10 |  |  |  |  |
| 319 | 2.11.1 | update EWS operations manual (1) | 4d | 2018-08-27 | 2018-08-30 | 167 |  | as late as possible | DRRS 2 |
| 320 | 2.11.2 | update EWS operations manual (2) | 4d | 2018-08-31 | 2018-09-05 | 167, 319 |  |  | DRRS 2 |
| 321 | 2.11.3 | update EWS operations manual (3) | 3d | 2018-09-06 | 2018-09-10 | 167, 320 |  |  | DRRS 2 |
| 322 | 3 | **Early warning information** | 125d? | 2018-02-09 | 2018-09-10 |  |  |  |  |
| 323 | 3.1 | generate, review, and release EWI | 1d? | 2018-09-10 | 2018-09-10 |  | 12400d | as late as possible | monitoringPersonnel40+ |
| 324 | 3.2 | **EWI support** | 125d? | 2018-02-09 | 2018-09-10 |  |  |  |  |
| 325 | 3.2.1 | **operational systems** | 1d? | 2018-02-09 | 2018-02-09 |  | 12400d |  |  |
| 326 | 3.2.1.1 | **sensors and dataloggers** | 1d? | 2018-02-09 | 2018-02-09 |  | 12400d |  |  |
| 327 | 3.2.1.1.1 | replace defective sensors and loggers | 1d? | 2018-09-10 | 2018-09-10 |  | 12400d | as late as possible | eletech 1 |
| 328 | 3.2.1.1.2 | monitor sensor and datalogger health status | 1d? | 2018-09-10 | 2018-09-10 |  | 12400d | as late as possible | emb engr 8 |
| 329 | 3.2.1.1.3 | track maintenance activities | 1d? | 2018-09-10 | 2018-09-10 |  | 12400d | as late as possible | emb engr 8 |
| 330 | 3.2.1.1.4 | manage inventory | 1d? | 2018-09-10 | 2018-09-10 |  | 12400d | as late as possible | eletech 2 |
| 331 | 3.2.1.1.5 | track PLAA events | 1d? | 2018-09-10 | 2018-09-10 |  | 12400d | as late as possible | emb engr 8 |
| 332 | 3.2.1.1.6 | track sensor events | 1d? | 2018-09-10 | 2018-09-10 |  | 12400d | as late as possible | emb engr 8 |
| 333 | 3.2.1.1.7 | field-based maintenance | 1d? | 2018-09-10 | 2018-09-10 |  | 12400d | as late as possible | eletech 3 |

Notes:
- 314: ilan bang sites?
- 318: may dependency sa MEAL results (habang hindi pa fully defined ang MEAL) consider an "about the project" document as dependency
- 323: fractional work, will vary per staff
- 325: fractional work for all activities under this
- 327: includes drilling and deployment; (may be include also procurement of drilling services?)

| ID | WBS | Task | Duration | Start | Finish | Predecessors | Total slack | Constraint | Resources |
| --- | --- | --- | --- | --- | --- | --- | --- | --- | --- |
| 334 | 3.2.1.2 | **central server (software)** | 1d? | 2018-02-09 | 2018-02-09 |  | 12400d |  |  |
| 335 | 3.2.1.2.1 | maintain data gathering system | 1d? | 2018-09-10 | 2018-09-10 |  | 12400d | as late as possible |  |
| 336 | 3.2.1.2.2 | maintain data storage and management system | 1d? | 2018-09-10 | 2018-09-10 |  | 12400d | as late as possible |  |
| 337 | 3.2.1.2.3 | maintain data analysis system | 1d? | 2018-09-10 | 2018-09-10 |  | 12400d | as late as possible |  |
| 338 | 3.2.1.2.4 | maintain info dissemination system | 1d? | 2018-09-10 | 2018-09-10 |  | 12400d | as late as possible |  |
| 339 | 3.2.1.2.5 | train staff for debugging | 0.5d? | 2018-09-10 | 2018-09-10 |  | 12450d | as late as possible |  |
| 340 | 3.2.1.2.6 | produce code and documentation standards | 1d? | 2018-09-10 | 2018-09-10 |  | 12400d | as late as possible |  |
| 341 | 3.2.2 | **updated database** | 1d? | 2018-02-09 | 2018-02-09 |  | 12400d |  |  |
| 342 | 3.2.2.1 | maintain tables | 1d? | 2018-09-10 | 2018-09-10 |  | 12400d | as late as possible |  |
| 343 | 3.2.3 | **parsed SMS** | 1d? | 2018-02-09 | 2018-02-09 |  | 12400d |  |  |
| 344 | 3.2.3.1 | maintain SMS parsing | 1d? | 2018-09-10 | 2018-09-10 |  | 12400d | as late as possible |  |
| 345 | 3.2.4 | **capable personnel for monitoring and early warning** | 125d? | 2018-02-09 | 2018-09-10 |  |  |  |  |
| 346 | 3.2.4.1 | **develop training materials** | 14d? | 2018-02-09 | 2018-03-01 |  | 11000d |  |  |
| 347 | 3.2.4.1.1 | hazard monitoring | 15d | 2018-08-20 | 2018-09-07 |  | 11000d | as late as possible | training specialist 1 |
| 348 | 3.2.4.1.2 | analysis and validation | 15d | 2018-08-20 | 2018-09-07 |  | 11000d | as late as possible | training specialist 1 |
| 349 | 3.2.4.1.3 | sensor maintenance | 1d? | 2018-09-07 | 2018-09-07 |  | 12400d | as late as possible | eletech 5 |
| 350 | 3.2.4.1.4 | communications protocol | 15d | 2018-08-20 | 2018-09-07 |  | 11000d | as late as possible | training specialist 1 |
| 351 | 3.2.4.2 | **conduct EWS protocol trainings (internal)** | 1d? | 2018-09-10 | 2018-09-10 |  |  |  |  |
| 352 | 3.2.4.2.1 | hazard monitoring | 1d | 2018-09-10 | 2018-09-10 | 347 |  | as late as possible | geotech 1 |
| 353 | 3.2.4.2.2 | analysis and validation | 1d | 2018-09-10 | 2018-09-10 | 348 |  | as late as possible | data scientist 7 |
| 354 | 3.2.4.2.3 | sensor maintenance | 1d? | 2018-09-10 | 2018-09-10 | 349 |  | as late as possible | eletech 5 |
| 355 | 3.2.4.2.4 | communications protocol | 1d | 2018-09-10 | 2018-09-10 | 350 |  | as late as possible | DRRS 2 |
| 356 | 3.2.4.3 | **conduct EWS protocol trainings (external)** | 7d? | 2018-02-09 | 2018-02-20 |  | 11800d |  |  |
| 357 | 3.2.4.3.1 | combo training 1 (hazard monitoring, analysis, comm protocol) | 7d | 2018-02-09 | 2018-02-20 |  | 11800d |  | training specialist 1; training specialist 2; training specialist 4 |
| 358 | 3.2.4.3.2 | combo training 2 (hazard monitoring, analysis, comm protocol) | 7d | 2018-02-09 | 2018-02-20 |  | 11800d |  | training specialist 1; training specialist 2; training specialist 4 |
| 359 | 3.2.4.3.3 | combo training 3 (hazard monitoring, analysis, comm protocol) | 7d | 2018-02-09 | 2018-02-20 |  | 11800d |  | training specialist 1; training specialist 2; training specialist 4 |
| 360 | 3.2.4.3.4 | combo training n (hazard monitoring, analysis, comm protocol) | 7d | 2018-02-09 | 2018-02-20 |  | 11800d |  | training specialist 1; training specialist 2; training specialist 4 |
| 361 | 3.2.4.3.5 | sensor maintenance | 1d? | 2018-09-10 | 2018-09-10 |  | 12400d | as late as possible | training specialist 3 |

Notes:
- 339: for purpose of pool of debuggers
- 341: fractional work
- 343: Fractional work
- 349: fractional work
- 351: will involve some, if not all of project staff, as participants in training; proposal: express this as fractional work included in monitoring
- 354: fractional work
- 357: assume duration accounts for cluster of 2-3 sites
- 358: assume duration accounts for cluster of 2-3 sites
- 359: assume duration accounts for cluster of 2-3 sites
- 360: assume duration accounts for cluster of 2-3 sites
- 361: fractional work

| ID | WBS | Task | Duration | Start | Finish | Predecessors | Total slack | Constraint | Resources |
| --- | --- | --- | --- | --- | --- | --- | --- | --- | --- |
| 362 | 4 | **Strategic communications** | 125d? | 2018-02-09 | 2018-09-10 |  |  |  |  |
| 363 | 4.1 | research stakeholder info needs | 1d? | 2018-08-23 | 2018-08-23 |  | 11600d | as late as possible | comm res 1 |
| 364 | 4.2 | research policy process | 1d? | 2018-09-10 | 2018-09-10 |  | 12400d | as late as possible | comm res 2 |
| 365 | 4.3 | develop strategic comm plan | 1d? | 2018-08-24 | 2018-08-24 | 363 |  | as late as possible | comm res 1 |
| 366 | 4.4 | **develop communication materials** | 8d? | 2018-08-27 | 2018-09-10 | 365 |  |  |  |
| 367 | 4.4.1 | **website** | 8d? | 2018-08-27 | 2018-09-10 |  |  |  |  |
| 368 | 4.4.1.1 | develop website content | 1d? | 2018-08-27 | 2018-08-27 |  |  | as late as possible | comm res 1 |
| 369 | 4.4.1.2 | design website | 1d? | 2018-08-28 | 2018-08-28 | 368 |  | as late as possible | comm res 1 |
| 370 | 4.4.1.3 | develop content management system (core) | 9d | 2018-08-29 | 2018-09-10 | 369 |  | as late as possible | full stack dev 1 |
| 371 | 4.5 | develop non-website communications | 1d? | 2018-09-10 | 2018-09-10 |  | 12400d | as late as possible | comm res 2 |
| 372 | 5 | **MEAL system** | 125d? | 2018-02-09 | 2018-09-10 |  |  |  |  |
| 373 | 5.1 | sourcing of MEAL expert | 7d | 2018-02-09 | 2018-02-19 |  | 4100d |  | MEAL officer 1 |
| 374 | 5.2 | develop MEAL framework | 2d | 2018-04-30 | 2018-05-01 | 373 | 4100d | as late as possible | MEAL expert; MEAL officer 1; MEAL officer 2; MEAL officer 3; MEAL officer 4; MEAL officer 5; MEAL officer 6 |
| 375 | 5.3 | develop MEAL plan | 4d | 2018-05-02 | 2018-05-07 | 374 |  | as late as possible | MEAL expert; MEAL officer 1; MEAL officer 2; MEAL officer 3; MEAL officer 4; MEAL officer 5; MEAL officer 6 |
| 376 | 5.4 | conduct training needs analysis | 1d | 2018-05-08 | 2018-05-08 | 375 | 7300d |  |  |
| 377 | 5.5 | develop training plan | 2d | 2018-05-09 | 2018-05-10 | 376 | 7300d |  |  |
| 378 | 5.6 | **monitoring mechanisms** | 125d | 2018-02-09 | 2018-09-10 |  |  |  |  |
| 379 | 5.6.1 | **standard documentation and storage** | 76d | 2018-05-08 | 2018-09-10 |  |  |  |  |
| 380 | 5.6.1.1 | design documentation templates and organization/structure | 5d | 2018-08-31 | 2018-09-06 | 375 | 6900d | as late as possible | MEAL officer 1; MEAL officer 2; MEAL officer 3; MEAL officer 4; MEAL officer 5; MEAL officer 6 |
| 381 | 5.6.1.2 | design repository system | 2d | 2018-09-07 | 2018-09-10 | 380 |  | as late as possible | programmer 1 |
| 382 | 5.6.2 | **PLAA** | 76d | 2018-05-08 | 2018-09-10 |  |  |  |  |
| 383 | 5.6.2.1 | review current PLAA vis-a-vis MEAL plan | 2d | 2018-09-06 | 2018-09-07 | 375 | 7300d | as late as possible | MEAL officer 1; MEAL staff 1; MEAL staff 2 |
| 384 | 5.6.2.2 | revise PLAA guidelines | 1d | 2018-09-10 | 2018-09-10 | 383 |  | as late as possible | MEAL officer 1; MEAL staff 1; MEAL staff 2 |
| 385 | 5.6.3 | **EWS-QA** | 125d | 2018-02-09 | 2018-09-10 |  |  |  |  |
| 386 | 5.6.3.1 | review current EWS-QA vis-a-vis MEAL plan | 2d | 2018-09-06 | 2018-09-07 | 375 | 7300d | as late as possible | MEAL officer 2; MEAL staff 3; MEAL staff 4 |
| 387 | 5.6.3.2 | revise EWS-QA guidelines | 1d | 2018-09-10 | 2018-09-10 | 386 |  | as late as possible | MEAL officer 2; MEAL staff 3; MEAL staff 4 |
| 388 | 5.6.3.3 | revise tools for data gathering | 2d | 2018-02-09 | 2018-02-12 |  | 12300d |  | programmer 2 |

Notes:
- 381: google drive (free account) as main repo; task involves mainly the set-up of the account, permissions, etc...

| ID | WBS | Task | Duration | Start | Finish | Predecessors | Total slack | Constraint | Resources |
| --- | --- | --- | --- | --- | --- | --- | --- | --- | --- |
| 389 | 5.6.4 | **outcome-impact** | 76d | 2018-05-08 | 2018-09-10 |  |  |  |  |
| 390 | 5.6.4.1 | review outcome-impact vis-a-vis MEAL plan | 2d | 2018-09-06 | 2018-09-07 | 375 | 7300d | as late as possible | MEAL officer 3; MEAL staff 5; MEAL staff 6 |
| 391 | 5.6.4.2 | revise outcome-impact | 1d | 2018-09-10 | 2018-09-10 | 390 |  | as late as possible | MEAL officer 3; MEAL staff 5; MEAL staff 6 |
| 392 | 5.6.5 | **administrative process** | 76d | 2018-05-08 | 2018-09-10 |  |  |  |  |
| 393 | 5.6.5.1 | review admin process trackers vis-a-vis MEAL plan | 2d | 2018-09-06 | 2018-09-07 | 375 | 7300d | as late as possible | MEAL officer 4; MEAL staff 7; MEAL staff 8 |
| 394 | 5.6.5.2 | revise admin process trackers | 1d | 2018-09-10 | 2018-09-10 | 393 |  | as late as possible | MEAL officer 4; MEAL staff 7; MEAL staff 8 |
| 395 | 5.6.6 | **project output** | 76d | 2018-05-08 | 2018-09-10 |  |  |  |  |
| 396 | 5.6.6.1 | develop team output tracker | 1d | 2018-09-06 | 2018-09-06 | 375 | 7300d | as late as possible | MEAL officer 5; MEAL staff 10; MEAL staff 9 |
| 397 | 5.6.6.2 | develop individual output tracker | 1d | 2018-09-07 | 2018-09-07 | 375, 396 |  | as late as possible | MEAL officer 5; MEAL staff 10; MEAL staff 9 |
| 398 | 5.6.6.3 | develop individual capacity tracker | 1d | 2018-09-10 | 2018-09-10 | 375, 397 |  | as late as possible | MEAL officer 5; MEAL staff 10; MEAL staff 9 |
| 399 | 5.6.7 | **stakeholder concerns** | 0.5d | 2018-05-08 | 2018-05-08 |  | 7550d |  |  |
| 400 | 5.6.7.1 | develop stakeholder concerns tracker | 0.5d | 2018-09-10 | 2018-09-10 | 375 | 7550d | as late as possible | MEAL officer 3; MEAL staff 5; MEAL staff 6 |
| 401 | 5.7 | **MEAL implem** | 76d? | 2018-05-08 | 2018-09-10 |  |  |  |  |
| 402 | 5.7.1 | **EWS-QA** | 1d | 2018-05-08 | 2018-05-08 | 375 | 7500d |  |  |
| 403 | 5.7.1.1 | **bimonthly** | 1d | 2018-05-08 | 2018-05-08 |  | 7500d |  |  |
| 404 | 5.7.1.1.1 | gather, analyze, evaluate data | 1d | 2018-05-08 | 2018-05-08 |  | 7500d |  | MEAL officer 2; MEAL staff 3; MEAL staff 4 |
| 405 | 5.7.1.1.2 | prepare for presentation (feedback sessions) | 0d | 2018-05-08 | 2018-05-08 | 404 | 7500d |  | MEAL officer 2; MEAL staff 3; MEAL staff 4 |
| 406 | 5.7.1.2 | **quarterly** | 1d | 2018-05-08 | 2018-05-08 |  | 7500d |  |  |
| 407 | 5.7.1.2.1 | gather, analyze, evaluate data | 1d | 2018-05-08 | 2018-05-08 |  | 7500d |  | MEAL officer 2; MEAL staff 3; MEAL staff 4 |
| 408 | 5.7.1.2.2 | prepare for presentation (feedback sessions) | 0d | 2018-05-08 | 2018-05-08 | 407 | 7500d |  | MEAL officer 2; MEAL staff 3; MEAL staff 4 |
| 409 | 5.7.1.3 | **annual** | 1d | 2018-05-08 | 2018-05-08 |  | 7500d |  |  |
| 410 | 5.7.1.3.1 | gather, analyze, evaluate data | 1d | 2018-05-08 | 2018-05-08 |  | 7500d |  | MEAL officer 2; MEAL staff 3; MEAL staff 4 |
| 411 | 5.7.1.3.2 | prepare for presentation (feedback sessions) | 0d | 2018-05-08 | 2018-05-08 | 410 | 7500d |  | MEAL officer 2; MEAL staff 3; MEAL staff 4 |
| 412 | 5.7.2 | **PLAA** | 76d? | 2018-05-08 | 2018-09-10 | 375 |  |  |  |
| 413 | 5.7.2.1 | **site 1** | 13d | 2018-05-08 | 2018-05-24 |  |  |  |  |
| 414 | 5.7.2.1.1 | conduct sensor fieldwork - write report | 6d | 2018-05-08 | 2018-05-15 |  | 400d |  | eletech 1; eletech 2 |
| 415 | 5.7.2.1.2 | conduct landslide fieldwork - write report | 10d | 2018-05-08 | 2018-05-21 |  |  |  | geol 1; geotech 1 |
| 416 | 5.7.2.1.3 | conduct community fieldwork - write report | 10d | 2018-05-08 | 2018-05-21 |  |  |  | social scientist 1; social scientist 2 |
| 417 | 5.7.2.1.4 | review | 3d | 2018-05-22 | 2018-05-24 | 414, 415, 416 |  |  | MEAL officer 1; MEAL staff 1; MEAL staff 2 |

Notes:
- 403: QA feedback session should be incorporated in main monitoring work, also as fractional work
- 412: mas ipwesto ang karamihan ng PLAA sa 2nd half
- 417: kelangan ilinaw ang scope ng review

| ID | WBS | Task | Duration | Start | Finish | Predecessors | Total slack | Resources |
| --- | --- | --- | --- | --- | --- | --- | --- | --- |
| 418 | 5.7.2.2 | **site 2** | 12d | 2018-05-25 | 2018-06-14 | 413 |  |  |
| 419 | 5.7.2.2.1 | conduct sensor fieldwork - write report | 5d | 2018-05-25 | 2018-05-31 |  | 500d | eletech 1; eletech 2 |
| 420 | 5.7.2.2.2 | conduct landslide fieldwork - write report | 9d | 2018-05-25 | 2018-06-11 |  |  | geol 1; geotech 1 |
| 421 | 5.7.2.2.3 | conduct community fieldwork - write report | 9d | 2018-05-25 | 2018-06-11 |  |  | social scientist 1; social scientist 2 |
| 422 | 5.7.2.2.4 | review | 3d | 2018-06-12 | 2018-06-14 | 419, 420, 421 |  | MEAL officer 1; MEAL staff 1; MEAL staff 2 |
| 423 | 5.7.2.3 | **site 3** | 13d | 2018-06-15 | 2018-07-05 | 418 |  |  |
| 424 | 5.7.2.3.1 | conduct sensor fieldwork - write report | 6d | 2018-06-15 | 2018-06-22 |  | 400d | eletech 1; eletech 2 |
| 425 | 5.7.2.3.2 | conduct landslide fieldwork - write report | 10d | 2018-06-15 | 2018-07-02 |  |  | geol 1; geotech 1 |
| 426 | 5.7.2.3.3 | conduct community fieldwork - write report | 10d | 2018-06-15 | 2018-07-02 |  |  | social scientist 1; social scientist 2 |
| 427 | 5.7.2.3.4 | review | 3d | 2018-07-03 | 2018-07-05 | 424, 425, 426 |  | MEAL officer 1; MEAL staff 1; MEAL staff 2 |
| 428 | 5.7.2.4 | **site 4** | 12d | 2018-07-06 | 2018-07-23 | 423 |  |  |
| 429 | 5.7.2.4.1 | conduct sensor fieldwork - write report | 5d | 2018-07-06 | 2018-07-12 |  | 400d | eletech 1; eletech 2 |
| 430 | 5.7.2.4.2 | conduct landslide fieldwork - write report | 9d | 2018-07-06 | 2018-07-18 |  |  | geol 1; geotech 1 |
| 431 | 5.7.2.4.3 | conduct community fieldwork - write report | 9d | 2018-07-06 | 2018-07-18 |  |  | social scientist 1; social scientist 2 |
| 432 | 5.7.2.4.4 | review | 3d | 2018-07-19 | 2018-07-23 | 429, 430, 431 |  | MEAL officer 1; MEAL staff 1; MEAL staff 2 |
| 433 | 5.7.2.5 | **site 5** | 15d | 2018-07-24 | 2018-08-16 | 428 |  |  |
| 434 | 5.7.2.5.1 | conduct sensor fieldwork - write report | 8d | 2018-07-24 | 2018-08-02 |  | 400d | eletech 1; eletech 2 |
| 435 | 5.7.2.5.2 | conduct landslide fieldwork - write report | 12d | 2018-07-24 | 2018-08-13 |  |  | geol 1; geotech 1 |
| 436 | 5.7.2.5.3 | conduct community fieldwork - write report | 12d | 2018-07-24 | 2018-08-13 |  |  | social scientist 1; social scientist 2 |
| 437 | 5.7.2.5.4 | review | 3d | 2018-08-14 | 2018-08-16 | 435, 434, 436 |  | MEAL officer 1; MEAL staff 1; MEAL staff 2 |
| 438 | 5.7.2.6 | **site 6** | 12d | 2018-08-17 | 2018-09-10 | 433 |  |  |
| 439 | 5.7.2.6.1 | conduct sensor fieldwork - write report | 5d | 2018-08-17 | 2018-08-27 |  | 400d | eletech 1; eletech 2 |
| 440 | 5.7.2.6.2 | conduct landslide fieldwork - write report | 10d | 2018-08-17 | 2018-09-05 |  |  | geol 1; geotech 1 |
| 441 | 5.7.2.6.3 | conduct community fieldwork - write report | 10d | 2018-08-17 | 2018-09-05 |  |  | social scientist 1; social scientist 2 |
| 442 | 5.7.2.6.4 | review | 3d | 2018-09-06 | 2018-09-10 | 440, 439, 441 |  | MEAL officer 1; MEAL staff 1; MEAL staff 2 |
| 443 | 5.7.2.7 | synthesis (across sites) | 1d? | 2018-05-08 | 2018-05-08 |  | 7500d |  |

Notes:
- 422: kelangan ilinaw ang scope ng review
- 427: kelangan ilinaw ang scope ng review
- 432: kelangan ilinaw ang scope ng review
- 437: kelangan ilinaw ang scope ng review
- 442: kelangan ilinaw ang scope ng review

| ID | WBS | Task | Duration | Start | Finish | Predecessors | Total slack |
| --- | --- | --- | --- | --- | --- | --- | --- |
| 444 | 5.7.3 | **outcome-impact** | 1d? | 2018-05-08 | 2018-05-08 | 375 | 7500d |
| 445 | 5.7.3.1 | **activity series 1** | 1d? | 2018-05-08 | 2018-05-08 |  | 7500d |
| 446 | 5.7.3.1.1 | gather data | 1d? | 2018-05-08 | 2018-05-08 |  | 7500d |
| 447 | 5.7.3.1.2 | analyze, evaluate data | 1d? | 2018-05-08 | 2018-05-08 |  | 7500d |
| 448 | 5.7.3.1.3 | provide recommendations | 1d? | 2018-05-08 | 2018-05-08 |  | 7500d |
| 449 | 5.7.4 | **project output** | 1d? | 2018-05-08 | 2018-05-08 | 375 | 7500d |
| 450 | 5.7.4.1 | **activity series 1** | 1d? | 2018-05-08 | 2018-05-08 |  | 7500d |
| 451 | 5.7.4.1.1 | gather data | 1d? | 2018-05-08 | 2018-05-08 |  | 7500d |
| 452 | 5.7.4.1.2 | analyze, evaluate data | 1d? | 2018-05-08 | 2018-05-08 |  | 7500d |
| 453 | 5.7.4.1.3 | provide recommendations | 1d? | 2018-05-08 | 2018-05-08 |  | 7500d |
| 454 | 5.7.5 | **stakeholder concerns** | 1d? | 2018-05-08 | 2018-05-08 | 375 | 7500d |
| 455 | 5.7.5.1 | **activity series 1** | 1d? | 2018-05-08 | 2018-05-08 |  | 7500d |
| 456 | 5.7.5.1.1 | gather data | 1d? | 2018-05-08 | 2018-05-08 |  | 7500d |
| 457 | 5.7.5.1.2 | analyze, evaluate data | 1d? | 2018-05-08 | 2018-05-08 |  | 7500d |
| 458 | 5.7.5.1.3 | provide recommendations | 1d? | 2018-05-08 | 2018-05-08 |  | 7500d |
| 459 | 5.7.6 | **admin process** | 1d? | 2018-05-08 | 2018-05-08 | 375 | 7500d |
| 460 | 5.7.6.1 | **activity series 1** | 1d? | 2018-05-08 | 2018-05-08 |  | 7500d |
| 461 | 5.7.6.1.1 | gather data | 1d? | 2018-05-08 | 2018-05-08 |  | 7500d |
| 462 | 5.7.6.1.2 | analyze, evaluate data | 1d? | 2018-05-08 | 2018-05-08 |  | 7500d |
| 463 | 5.7.6.1.3 | provide recommendations | 1d? | 2018-05-08 | 2018-05-08 |  | 7500d |
